# 水务智慧闸站软件平台

Schedule from a web Gantt chart, 2024-04-15 to 2024-11-08.
Saturdays and Sundays are off

## Schedule

| ID | WBS | Task | Type | Duration | Start | Finish | Predecessors | Complete | Status |
| --- | --- | --- | --- | --- | --- | --- | --- | --- | --- |
| 2 | 1 | 数据库设计 | fixed start, fixed end | 10d | 2024-04-15 | 2024-04-26 |  | 100% | done |
| 3 | 2 | **系统管理** | fixed start, fixed end | 15d | 2024-04-29 | 2024-05-17 | 2 | 100% | done |
| 4 | 2.1 | 用户模块 |  | 10d | 2024-04-29 | 2024-05-10 |  | 100% | done |
| 5 | 2.2 | 权限模块 |  | 5d | 2024-05-13 | 2024-05-17 | 4 | 100% | done |
| 6 | 2.3 | 部门模块 |  | 5d | 2024-05-13 | 2024-05-17 | 4 | 100% | done |
| 7 | 2.4 | 区划模块 |  | 5d | 2024-05-13 | 2024-05-17 | 4 | 100% | done |
| 8 | 2.5 | 日志模块 |  | 5d | 2024-05-13 | 2024-05-17 | 4 | 100% | done |
| 9 | 3 | **相机管理** |  | 15d | 2024-05-20 | 2024-06-07 | 3 | 45% |  |
| 10 | 3.1 | 海康相机协议对接（报警、事件、视频） |  | 15d | 2024-05-20 | 2024-06-07 |  | 60% |  |
| 11 | 3.2 | 基础信息模块 |  | 5d | 2024-05-20 | 2024-05-24 |  |  |  |
| 12 | 4 | **设备管理** |  | 15d | 2024-06-10 | 2024-06-28 | 9 |  | waiting |
| 13 | 4.1 | 基础信息模块 |  | 10d | 2024-06-10 | 2024-06-21 |  |  | waiting |
| 14 | 4.2 | 设备数据模块 |  | 15d | 2024-06-10 | 2024-06-28 |  |  | waiting |
| 15 | 5 | **数据采集服务** |  | 15d | 2024-07-01 | 2024-07-19 | 12 |  | waiting |
| 16 | 5.1 | 设备协议对接 |  | 15d | 2024-07-01 | 2024-07-19 |  |  | waiting |
| 17 | 5.2 | 数据解析、存储 |  | 10d | 2024-07-01 | 2024-07-12 |  |  | waiting |
| 18 | 5.3 | 水文信息数据对接 |  | 10d | 2024-07-01 | 2024-07-12 |  |  | waiting |
| 19 | 6 | GIS 一张图 |  | 8d | 2024-07-22 | 2024-07-31 | 15 |  | waiting |
| 20 | 7 | **统计分析** |  | 5d | 2024-08-01 | 2024-08-07 | 19 |  | waiting |
| 21 | 7.1 | 水位数据分析 |  | 5d | 2024-08-01 | 2024-08-07 |  |  | waiting |
| 22 | 7.2 | 闸门开关数据分析 |  | 5d | 2024-08-01 | 2024-08-07 |  |  | waiting |
| 23 | 7.3 | 水泵开关数据分析 |  | 5d | 2024-08-01 | 2024-08-07 |  |  | waiting |
| 24 | 8 | **巡检管理** |  | 20d | 2024-08-08 | 2024-09-04 | 20 |  | waiting |
| 25 | 8.1 | 手持终端开发 |  | 20d | 2024-08-08 | 2024-09-04 |  |  | waiting |
| 26 | 8.2 | 巡检记录 |  | 10d | 2024-08-08 | 2024-08-21 |  |  | waiting |
| 27 | 9 | 数据大屏 |  | 15d | 2024-09-05 | 2024-09-25 | 24 |  | waiting |
| 28 | 10 | 自控软件程序编制 |  | 90d | 2024-06-10 | 2024-10-11 |  |  | waiting |
| 29 | 11 | 闸门远程测控功能 |  | 45d | 2024-06-24 | 2024-08-23 |  |  | waiting |
| 30 | 12 | 整体功能测试 |  | 20d | 2024-10-14 | 2024-11-08 | 28 |  | waiting |
